# RAH Chiller #4 Rebuild Project 2025.09.02

How a schedule from Primavera P6 changed from version to version. A marks actual dates.

## Version 1 (data date 2025-09-02, saved 2026-02-08, file BL-54069-B2-20250902.xer)

Note of the change: Initial commit: schedule analytics tool

| ID | WBS | Task | Duration | Start | Finish | Predecessors | Complete | Total float | Constraint |
| --- | --- | --- | --- | --- | --- | --- | --- | --- | --- |
|  | 3 | **Project Summary & Milestones** |  | 2023-10-20 | 2026-01-09 |  |  |  |  |
| MILE-100 |  | Contract Commencement date | 0d | 2023-10-20 A | 2023-10-20 A |  | 100% |  |  |
| MILE-110 |  | IFC Drawing Issue | 0d | 2023-10-25 A | 2023-10-25 A |  | 100% |  |  |
| MILE-150 |  | Electrical Permit | 18d | 2024-01-15 A | 2024-02-02 A | MILE-110 SS | 100% |  |  |
| MILE-120 |  | Mobilization | 0d | 2024-02-15 A | 2024-02-15 A | C-MOB-100 SS | 100% |  |  |
| MILE-130 |  | Substiantial Performance of Work | 0d | 2025-12-03 | 2025-12-03 | PCO-130 FF |  | 0d | finish on or before 2025-12-03 |
| MILE-140 |  | Total Completion | 0d | 2026-01-09 | 2026-01-09 | PCS-150 FF |  | 0d | finish on or before 2026-01-09 |
|  | 1 | **Preconstruction** |  | 2023-11-29 | 2025-05-28 |  |  |  |  |
|  | 5 | **Shop Drawings/Submittals and Procurement** |  | 2023-11-29 | 2025-05-28 |  |  |  |  |
|  | 4 | **Compressor Equipment** |  | 2023-11-29 | 2024-11-04 |  |  |  |  |
| P-SB-C-10 |  | Compressor Subcontract Award | 5d | 2023-11-29 A | 2024-01-03 A | MILE-100, MILE-110 FS+26d | 100% |  |  |
| P-PRO-C-20 |  | Compressor Parts Delivery | 55d | 2024-01-04 A | 2024-11-04 A | P-SB-C-10 | 100% |  |  |
| P-PRO-CH-10 |  | Chiller control and Purge system Delivery on Site | 0d | 2024-11-04 A | 2024-11-04 A | P-PRO-C-20 FF | 100% |  |  |
|  | 8 | **Concrete** |  |  |  |  |  |  |  |
|  | 6 | **Electrical** |  | 2024-01-15 | 2024-02-22 |  |  |  |  |
| P-SB-E-10 |  | Electrical Subcontract Award | 5d | 2024-01-15 A | 2024-01-31 A | MILE-100, MILE-110 FS+29d | 100% |  | start on or after 2024-01-15 |
| P-SD-E-20 |  | Electical Shop Drawings Issue | 5d | 2024-02-01 A | 2024-02-07 A | P-SB-E-10 | 100% |  |  |
| P-SD-E-30 |  | Electical Shop Drawing Review & Approval | 5d | 2024-02-08 A | 2024-02-14 A | P-SD-E-20 | 100% |  |  |
| P-PRO-E-10 |  | Electical Delivery | 5d | 2024-02-15 A | 2024-02-22 A | P-SD-E-30 | 100% |  |  |
|  | 3 | **Waterproofing** |  | 2025-05-28 | 2025-05-28 |  |  |  |  |
| P-SD-WP-10 |  | Waterproofing Shop Drawings Issue | 5d | 2025-05-28 A | 2025-05-28 A | MILE-100 SS, MILE-110 SS | 100% |  |  |
|  | 5 | **Integrated Phased Planning** |  | 2024-02-15 | 2025-12-02 |  |  |  |  |
|  | 4 | **QA/QC Hold Points** |  | 2025-11-24 | 2025-12-02 |  |  |  |  |
| IPP-QAQC-10 |  | Mechanical Inspection | 1d | 2025-11-24 | 2025-11-24 | C-PH3-RI-10, IPP-SAFE-30 |  | 7d |  |
| IPP-QAQC-20 |  | Electrical Inspection | 1d | 2025-11-26 | 2025-11-26 | C-PH3-RI-20 |  | 0d |  |
| IPP-QAQC-30 |  | FM&E Inspection | 1d | 2025-12-02 | 2025-12-02 | CX-100 |  | 1d |  |
|  | 2 | **Safety Hold Points** |  | 2024-02-15 | 2025-11-13 |  |  |  |  |
| IPP-SAFE-10 |  | Hold Point: Safety Start Up | 1d | 2024-02-15 A | 2024-02-15 A | MILE-100 SS | 100% |  |  |
| IPP-SAFE-20 |  | Safety Hold Point: Hoisting and Rigging Removal | 1d | 2025-10-21 | 2025-10-21 | C-PH1-RM-20 SS |  | 52d |  |
| IPP-SAFE-30 |  | Safety Hold Point: Hoisting and Rigging Install | 1d | 2025-11-13 | 2025-11-13 | C-PH3-RI-10 SS |  | 13d |  |
|  | 6 | **Change Management** |  | 2025-04-07 | 2025-08-26 |  |  |  |  |
|  | 1 | **RFI#03 Tunnel Location** |  | 2025-04-07 | 2025-07-18 |  |  |  |  |
| X-RFI-03-10 |  | RFI#003 Issued | 1d | 2025-04-07 A | 2025-04-07 A |  | 100% |  |  |
| X-RFI-03-20 |  | RFI#003 Review and Response | 5d | 2025-04-08 A | 2025-04-23 A | X-RFI-03-10, X-RFI-03-10 FF | 100% |  |  |
| X-RFI-03-30 |  | RFI#003 Site Plan Drawing by Consultant | 5d | 2025-04-24 A | 2025-07-18 A | X-RFI-03-20 | 100% |  |  |
|  | 2 | **CO#02 Alternate Execution Strategy - Basement** |  | 2025-08-18 | 2025-08-26 |  |  |  |  |
| X-CO-02-10 |  | CO#02 Review and Approval for Pricing | 5d | 2025-08-18 A | 2025-08-25 A |  | 100% |  |  |
| X-CO-02-20 |  | CO#02 Issued | 5d | 2025-08-26 A | 2025-08-26 A | X-CO-02-10 | 100% |  |  |
|  | 8 | **Construction/Repair** |  | 2024-02-15 | 2025-11-25 |  |  |  |  |
|  | 9 | **Construction** |  | 2024-02-15 | 2025-11-25 |  |  |  |  |
|  | 5 | **Mobilization** |  | 2024-02-15 | 2025-10-10 |  |  |  |  |
| C-MOB-100 |  | Site Mobilization | 1d | 2024-02-15 A | 2024-02-15 A | MILE-100 FS+10d, MILE-110 FS+10d | 100% |  |  |
| C-MOB-130 |  | Infection Prevention Control Document (AHS) | 5d | 2024-02-16 A | 2024-03-15 A | IPP-SAFE-10 | 100% |  |  |
| C-MOB-110 |  | Pre Work Hazard Assessment, Safety Start Up | 1d | 2024-02-29 A | 2024-02-29 A | C-MOB-100 | 100% |  |  |
| C-MOB-140 |  | AHS Suspention order of the work | 103d | 2024-03-21 A | 2025-04-01 A |  | 100% |  |  |
| C-MOB-150 |  | Pre Work Planning (RFI, Procurement and Site Investigation) | 5d | 2025-04-02 A | 2025-10-03 | C-MOB-140, X-CO-02-20 |  | 0d |  |
| C-MOB-160 |  | Mobilization (Sticky Mats and Safety Board) | 5d | 2025-10-06 | 2025-10-10 | C-MOB-150, X-CO-02-20 |  | 0d |  |
|  | 1 | **Removal Phase #1** |  | 2025-10-14 | 2025-10-29 |  |  |  |  |
| C-PH1-RM-10 |  | Equipment Disconnecting (Electrical and Trane) | 5d | 2025-10-14 | 2025-10-20 | C-MOB-110, IPP-SAFE-10, C-MOB-150, C-MOB-160 |  | 0d |  |
| C-PH1-RM-20 |  | ICON - Mechanical Demo and Hoisting | 7d | 2025-10-21 | 2025-10-29 | C-PH1-RM-10 |  | 0d |  |
|  | 2 | **Rebuild Phase #2** |  | 2025-10-30 | 2025-11-12 |  |  |  |  |
| C-PH2-RB-10 |  | Electrical Rough-ins | 3d | 2025-10-30 | 2025-11-03 | C-PH1-RM-20, IPP-SAFE-20 |  | 46d |  |
| C-PH2-RB-20 |  | Insulation (ARMICELL) for Chiller | 5d | 2025-10-30 | 2025-11-05 | C-PH1-RM-20 |  | 5d |  |
| C-PH2-RB-30 |  | Compressor Rebuild | 10d | 2025-10-30 | 2025-11-12 | C-PH1-RM-20 |  | 0d |  |
|  | 3 | **Re-Install Phase #3** |  | 2025-11-13 | 2025-11-25 |  |  |  |  |
| C-PH3-RI-10 |  | ICON - Mechanical Reinstallation | 7d | 2025-11-13 | 2025-11-21 | P-PRO-CH-10 FS+1d, C-PH2-RB-30, C-PH2-RB-20 |  | 0d |  |
| C-PH3-RI-20 |  | Final Electrical | 2d | 2025-11-24 | 2025-11-25 | C-PH3-RI-10 |  | 0d |  |
|  | 2 | **Commissioning and Startup** |  | 2025-11-27 | 2025-12-01 |  |  |  |  |
| CX-100 |  | Start up and Commissioning | 3d | 2025-11-27 | 2025-12-01 | IPP-QAQC-20 |  | 0d |  |
|  | 15 | **Handover and Substantial Performance** |  | 2025-11-26 | 2026-01-09 |  |  |  |  |
| PCO-110 |  | Final Clean | 2d | 2025-11-26 | 2025-11-27 | C-PH3-RI-20 |  | 28d |  |
| PCO-120 |  | O&M Manual Submission, Review and Approval | 10d | 2025-12-02 | 2025-12-15 | CX-100 |  | 0d |  |
| PCO-140 |  | Site Demonstration and Training for RAH FM&E | 2d | 2025-12-02 | 2025-12-03 | CX-100 |  | 0d |  |
| PCO-130 |  | Substantial Performance of Work | 0d | 2025-12-03 | 2025-12-03 | CX-100 FF, IPP-QAQC-30 FF, IPP-QAQC-10 FF, PCO-140 FF |  | 0d |  |
| PCO-160 |  | O&M Binders Printing | 11d | 2025-12-16 | 2026-01-02 | PCO-120 |  | 0d |  |
| PCO-170 |  | O&M Binders Delivery | 5d | 2026-01-05 | 2026-01-09 | PCO-160 |  | 0d |  |
|  | 16 | **Close Out and Final Completion** |  | 2025-12-04 | 2026-01-09 |  |  |  |  |
| PCS-140 |  | Final Defficiencies Closeout | 32d | 2025-12-04 | 2026-01-04 | PCO-130 |  | 5d |  |
| PCS-150 |  | Total Completion | 0d | 2026-01-09 | 2026-01-09 | PCS-140 FF, PCO-120 FF, PCO-160 FF, PCO-170 FF |  | 0d |  |

## Version 2 (data date 2025-11-21, saved 2026-02-08, file UP-54069-20251121.xer)

Note of the change: Initial commit: schedule analytics tool

Last finish 2026-01-09 → 2026-02-17 (+39d). Complete tasks 22 → 28.

Added:

| ID | Task | Duration | Start | Finish | Predecessors |
| --- | --- | --- | --- | --- | --- |
| C-MOB-170 | Construction Delayed by Weather Conditions | 5d | 2025-10-13 A | 2025-10-24 A |  |
| C-PH1-RM-30 | ICON - Mechanical Hoisting | 5d | 2025-11-24 | 2025-11-28 | C-PH1-RM-20, IPP-SAFE-20 |
| C-PH3-RI-30 | ICON - Mechanical Hoisting | 7d | 2025-12-15 | 2025-12-23 | IPP-SAFE-30 |

Changed:

| ID | Task | Start | Finish | Duration | Complete | Total float | Predecessors | Other |
| --- | --- | --- | --- | --- | --- | --- | --- | --- |
| 3 | **Project Summary & Milestones** |  | 2026-01-09 → 2026-02-17 (+39d) |  |  |  |  |  |
| MILE-130 | Substiantial Performance of Work | 2025-12-03 → 2026-01-12 (+40d) | 2025-12-03 → 2026-01-12 (+40d) |  |  | 0d → -23d |  |  |
| MILE-140 | Total Completion | 2026-01-09 → 2026-02-17 (+39d) | 2026-01-09 → 2026-02-17 (+39d) |  |  | 0d → -26d |  |  |
| 5 | **Integrated Phased Planning** |  | 2025-12-02 → 2026-01-12 (+41d) |  |  |  |  |  |
| 4 | **QA/QC Hold Points** | 2025-11-24 → 2025-12-31 (+37d) | 2025-12-02 → 2026-01-12 (+41d) |  |  |  |  |  |
| IPP-QAQC-10 | Mechanical Inspection | 2025-11-24 → 2025-12-31 (+37d) | 2025-11-24 → 2025-12-31 (+37d) |  |  | 7d → -17d |  |  |
| IPP-QAQC-20 | Electrical Inspection | 2025-11-26 → 2026-01-06 (+41d) | 2025-11-26 → 2026-01-06 (+41d) |  |  | 0d → -26d |  |  |
| IPP-QAQC-30 | FM&E Inspection | 2025-12-02 → 2026-01-12 (+41d) | 2025-12-02 → 2026-01-12 (+41d) |  |  | 1d → -23d |  |  |
| 2 | **Safety Hold Points** |  | 2025-11-13 → 2025-12-12 (+29d) |  |  |  |  |  |
| IPP-SAFE-20 | Safety Hold Point: Hoisting and Rigging Removal | 2025-10-21 → 2025-11-17 A (+27d) | 2025-10-21 → 2025-11-17 A (+27d) | 1d → 0d | 0% → 100% | 52d → none |  |  |
| IPP-SAFE-30 | Safety Hold Point: Hoisting and Rigging Install | 2025-11-13 → 2025-12-12 (+29d) | 2025-11-13 → 2025-12-12 (+29d) | 1d → 0d |  | 13d → -26d | C-PH3-RI-10 SS → C-PH2-RB-30 |  |
| X-RFI-03-20 | RFI#003 Review and Response |  |  |  |  |  | X-RFI-03-10, X-RFI-03-10 FF → X-RFI-03-10 |  |
| 8 | **Construction/Repair** |  | 2025-11-25 → 2026-01-06 (+42d) |  |  |  |  |  |
| 9 | **Construction** |  | 2025-11-25 → 2026-01-06 (+42d) |  |  |  |  |  |
| 5 | **Mobilization** |  | 2025-10-10 → 2025-10-24 (+14d) |  |  |  |  |  |
| C-MOB-150 | Pre Work Planning (RFI, Procurement and Site Investigation) |  | 2025-10-03 A |  | 0% → 100% | 0d → none |  |  |
| C-MOB-160 | Mobilization (Sticky Mats and Safety Board) | 2025-10-06 A | 2025-10-10 A |  | 0% → 100% | 0d → none |  |  |
| 1 | **Removal Phase #1** | 2025-10-14 → 2025-10-27 (+13d) | 2025-10-29 → 2025-11-28 (+30d) |  |  |  |  |  |
| C-PH1-RM-10 | Equipment Disconnecting (Electrical and Trane) | 2025-10-14 → 2025-10-27 A (+13d) | 2025-10-20 → 2025-11-04 A (+15d) |  | 0% → 100% | 0d → none | C-MOB-110, IPP-SAFE-10, C-MOB-150, C-MOB-160 → C-MOB-110, IPP-SAFE-10, C-MOB-150, C-MOB-160, C-MOB-170 |  |
| C-PH1-RM-20 | ICON - Mechanical Demo | 2025-10-21 → 2025-11-06 A (+16d) | 2025-10-29 → 2025-11-06 A (+8d) | 7d → 9d | 0% → 100% | 0d → none |  | was named ICON - Mechanical Demo and Hoisting |
| 2 | **Rebuild Phase #2** | 2025-10-30 → 2025-12-01 (+32d) | 2025-11-12 → 2025-12-12 (+30d) |  |  |  |  |  |
| C-PH2-RB-10 | Electrical Rough-ins | 2025-10-30 → 2025-12-01 (+32d) | 2025-11-03 → 2025-12-03 (+30d) |  |  | 46d → -19d | C-PH1-RM-20, IPP-SAFE-20 → C-PH1-RM-20, C-PH1-RM-30 |  |
| C-PH2-RB-30 | Compressor Rebuild | 2025-10-30 → 2025-12-01 (+32d) | 2025-11-12 → 2025-12-12 (+30d) |  |  | 0d → -26d | C-PH1-RM-20 → C-PH2-RB-10 FF, C-PH1-RM-30 |  |
| 3 | **Re-Install Phase #3** | 2025-11-13 → 2025-12-15 (+32d) | 2025-11-25 → 2026-01-06 (+42d) |  |  |  |  |  |
| C-PH3-RI-10 | ICON - Mechanical Reinstallation | 2025-11-13 → 2025-12-29 (+46d) | 2025-11-21 → 2025-12-30 (+39d) | 7d → 2d |  | 0d → -26d | P-PRO-CH-10 FS+1d, C-PH2-RB-30, C-PH3-RB-20 → P-PRO-CH-10 FS+1d, C-PH2-RB-30, IPP-SAFE-30, C-PH3-RI-30 |  |
| C-PH3-RB-20 | Insulation (ARMICELL) for Chiller | 2025-10-30 → 2025-12-31 (+62d) | 2025-11-05 → 2026-01-06 (+62d) | 5d → 3d |  | 5d → -26d | C-PH1-RM-20 → C-PH3-RI-10 |  |
| C-PH3-RI-20 | Final Electrical | 2025-11-24 → 2025-12-31 (+37d) | 2025-11-25 → 2026-01-05 (+41d) |  |  | 0d → -26d |  |  |
| 2 | **Commissioning and Startup** | 2025-11-27 → 2026-01-07 (+41d) | 2025-12-01 → 2026-01-09 (+39d) |  |  |  |  |  |
| CX-100 | Start up and Commissioning | 2025-11-27 → 2026-01-07 (+41d) | 2025-12-01 → 2026-01-09 (+39d) |  |  | 0d → -26d | IPP-QAQC-20 → IPP-QAQC-20, C-PH3-RB-20 |  |
| 15 | **Handover and Substantial Performance** | 2025-11-26 → 2026-01-06 (+41d) | 2026-01-09 → 2026-02-17 (+39d) |  |  |  |  |  |
| PCO-110 | Final Clean | 2025-11-26 → 2026-01-06 (+41d) | 2025-11-27 → 2026-01-06 (+40d) | 2d → 1d |  | 28d → -19d |  |  |
| PCO-120 | O&M Manual Submission, Review and Approval | 2025-12-02 → 2026-01-12 (+41d) | 2025-12-15 → 2026-01-23 (+39d) |  |  | 0d → -26d |  |  |
| PCO-140 | Site Demonstration and Training for RAH FM&E | 2025-12-02 → 2026-01-12 (+41d) | 2025-12-03 → 2026-01-12 (+40d) | 2d → 1d |  | 0d → -23d |  |  |
| PCO-130 | Substantial Performance of Work | 2025-12-03 → 2026-01-12 (+40d) | 2025-12-03 → 2026-01-12 (+40d) |  |  | 0d → -23d | CX-100 FF, IPP-QAQC-30 FF, IPP-QAQC-10 FF, PCO-140 FF → CX-100 FF, IPP-QAQC-30 FF, IPP-QAQC-10 FF, PCO-140 FF, PCO-110 FF |  |
| PCO-160 | O&M Binders Printing | 2025-12-16 → 2026-01-26 (+41d) | 2026-01-02 → 2026-02-09 (+38d) |  |  | 0d → -26d |  |  |
| PCO-170 | O&M Binders Delivery | 2026-01-05 → 2026-02-10 (+36d) | 2026-01-09 → 2026-02-17 (+39d) |  |  | 0d → -26d |  |  |
| 16 | **Close Out and Final Completion** | 2025-12-04 → 2026-01-13 (+40d) | 2026-01-09 → 2026-02-17 (+39d) |  |  |  |  |  |
| PCS-140 | Final Defficiencies Closeout | 2025-12-04 → 2026-01-13 (+40d) | 2026-01-04 → 2026-02-09 (+36d) | 32d → 20d |  | 5d → -21d | PCO-130 → PCO-130, MILE-130 |  |
| PCS-150 | Total Completion | 2026-01-09 → 2026-02-17 (+39d) | 2026-01-09 → 2026-02-17 (+39d) |  |  | 0d → -26d |  |  |

## Version 3 (data date 2025-12-04, saved 2026-02-08, file UP-54069-20251204.xer)

Note of the change: Initial commit: schedule analytics tool

Last finish 2026-02-17 → 2026-02-20 (+3d). Complete tasks 28 → 29.

Removed: C-PH2-RB-10 Electrical Rough-ins

Changed:

| ID | Task | Start | Finish | Duration | Complete | Total float | Predecessors |
| --- | --- | --- | --- | --- | --- | --- | --- |
| 3 | **Project Summary & Milestones** |  | 2026-02-17 → 2026-02-20 (+3d) |  |  |  |  |
| MILE-130 | Substiantial Performance of Work | 2026-01-12 → 2026-01-15 (+3d) | 2026-01-12 → 2026-01-15 (+3d) |  |  | -23d → -26d |  |
| MILE-140 | Total Completion | 2026-02-17 → 2026-02-20 (+3d) | 2026-02-17 → 2026-02-20 (+3d) |  |  | -26d → -29d |  |
| 5 | **Integrated Phased Planning** |  | 2026-01-12 → 2026-01-15 (+3d) |  |  |  |  |
| 4 | **QA/QC Hold Points** |  | 2026-01-12 → 2026-01-15 (+3d) |  |  |  |  |
| IPP-QAQC-20 | Electrical Inspection | 2026-01-06 → 2026-01-09 (+3d) | 2026-01-06 → 2026-01-09 (+3d) |  |  | -26d → -29d |  |
| IPP-QAQC-30 | FM&E Inspection | 2026-01-12 → 2026-01-15 (+3d) | 2026-01-12 → 2026-01-15 (+3d) |  |  | -23d → -26d |  |
| 8 | **Construction/Repair** |  | 2026-01-06 → 2026-01-08 (+2d) |  |  |  |  |
| 9 | **Construction** |  | 2026-01-06 → 2026-01-08 (+2d) |  |  |  |  |
| C-PH1-RM-30 | ICON - Mechanical Hoisting | 2025-11-24 A | 2025-11-28 A |  | 0% → 100% | -26d → none |  |
| C-PH2-RB-30 | Compressor Rebuild | 2025-12-01 A |  |  | 0% → 40% | -26d → -29d | Electrical Rough-ins FF, C-PH1-RM-30 → C-PH1-RM-30, C-PH1-RM-20 FF |
| 3 | **Re-Install Phase #3** |  | 2026-01-06 → 2026-01-08 (+2d) |  |  |  |  |
| C-PH3-RI-20 | Final Electrical |  | 2026-01-05 → 2026-01-08 (+3d) | 2d → 5d |  | -26d → -29d |  |
| 2 | **Commissioning and Startup** | 2026-01-07 → 2026-01-12 (+5d) | 2026-01-09 → 2026-01-14 (+5d) |  |  |  |  |
| CX-100 | Start up and Commissioning | 2026-01-07 → 2026-01-12 (+5d) | 2026-01-09 → 2026-01-14 (+5d) |  |  | -26d → -29d |  |
| 15 | **Handover and Substantial Performance** | 2026-01-06 → 2026-01-09 (+3d) | 2026-02-17 → 2026-02-20 (+3d) |  |  |  |  |
| PCO-110 | Final Clean | 2026-01-06 → 2026-01-09 (+3d) | 2026-01-06 → 2026-01-09 (+3d) |  |  | -19d → -22d |  |
| PCO-120 | O&M Manual Submission, Review and Approval | 2026-01-12 → 2026-01-15 (+3d) | 2026-01-23 → 2026-01-28 (+5d) |  |  | -26d → -29d |  |
| PCO-140 | Site Demonstration and Training for RAH FM&E | 2026-01-12 → 2026-01-15 (+3d) | 2026-01-12 → 2026-01-15 (+3d) |  |  | -23d → -26d |  |
| PCO-130 | Substantial Performance of Work | 2026-01-12 → 2026-01-15 (+3d) | 2026-01-12 → 2026-01-15 (+3d) |  |  | -23d → -26d |  |
| PCO-160 | O&M Binders Printing | 2026-01-26 → 2026-01-29 (+3d) | 2026-02-09 → 2026-02-12 (+3d) |  |  | -26d → -29d |  |
| PCO-170 | O&M Binders Delivery | 2026-02-10 → 2026-02-13 (+3d) | 2026-02-17 → 2026-02-20 (+3d) |  |  | -26d → -29d |  |
| 16 | **Close Out and Final Completion** | 2026-01-13 → 2026-01-16 (+3d) | 2026-02-17 → 2026-02-20 (+3d) |  |  |  |  |
| PCS-140 | Final Defficiencies Closeout | 2026-01-13 → 2026-01-16 (+3d) | 2026-02-09 → 2026-02-12 (+3d) |  |  | -21d → -24d |  |
| PCS-150 | Total Completion | 2026-02-17 → 2026-02-20 (+3d) | 2026-02-17 → 2026-02-20 (+3d) |  |  | -26d → -29d |  |

## Version 4 (data date 2025-12-18, saved 2026-02-08, file UP-54069-20251218.xer)

Note of the change: Initial commit: schedule analytics tool

Last finish 2026-02-20 → 2026-02-23 (+3d). Complete tasks 29 → 31.

Changed:

| ID | Task | Start | Finish | Duration | Complete | Total float | Predecessors |
| --- | --- | --- | --- | --- | --- | --- | --- |
| 3 | **Project Summary & Milestones** |  | 2026-02-20 → 2026-02-23 (+3d) |  |  |  |  |
| MILE-130 | Substiantial Performance of Work | 2026-01-15 → 2026-01-21 (+6d) | 2026-01-15 → 2026-01-21 (+6d) |  |  | -26d → -28d |  |
| MILE-140 | Total Completion | 2026-02-20 → 2026-02-23 (+3d) | 2026-02-20 → 2026-02-23 (+3d) |  |  | -29d → -30d |  |
| 5 | **Integrated Phased Planning** |  | 2026-01-15 → 2026-01-16 (+1d) |  |  |  |  |
| 4 | **QA/QC Hold Points** | 2025-12-31 → 2026-01-12 (+12d) | 2026-01-15 → 2026-01-16 (+1d) |  |  |  |  |
| IPP-QAQC-20 | Electrical Inspection | 2026-01-09 → 2026-01-12 (+3d) | 2026-01-09 → 2026-01-12 (+3d) |  |  | -29d → -30d |  |
| IPP-QAQC-10 | Mechanical Inspection | 2025-12-31 → 2026-01-14 (+14d) | 2025-12-31 → 2026-01-14 (+14d) |  |  | -17d → -23d |  |
| IPP-QAQC-30 | FM&E Inspection | 2026-01-15 → 2026-01-16 (+1d) | 2026-01-15 → 2026-01-16 (+1d) |  |  | -26d → -25d |  |
| 2 | **Safety Hold Points** |  | 2025-12-12 → 2025-11-24 (-18d) |  |  |  |  |
| IPP-SAFE-30 | Safety Hold Point: Hoisting and Rigging Install | 2025-12-12 → 2025-11-24 A (-18d) | 2025-12-12 → 2025-11-24 A (-18d) |  | 0% → 100% | -29d → none |  |
| 8 | **Construction/Repair** |  | 2026-01-08 → 2026-01-20 (+12d) |  |  |  |  |
| 9 | **Construction** |  | 2026-01-08 → 2026-01-20 (+12d) |  |  |  |  |
| 2 | **Rebuild Phase #2** |  | 2025-12-12 → 2025-12-17 (+5d) |  |  |  |  |
| C-PH2-RB-30 | Compressor Rebuild |  | 2025-12-12 → 2025-12-17 A (+5d) |  | 40% → 100% | -29d → none |  |
| 3 | **Re-Install Phase #3** | 2025-12-15 → 2025-12-19 (+4d) | 2026-01-08 → 2026-01-20 (+12d) |  |  |  |  |
| C-PH3-RI-30 | ICON - Mechanical Hoisting | 2025-12-15 → 2025-12-19 (+4d) |  | 7d → 3d |  | -29d → -30d |  |
| C-PH3-RI-20 | Final Electrical | 2025-12-31 → 2026-01-05 (+5d) | 2026-01-08 → 2026-01-09 (+1d) |  |  | -29d → -30d | C-PH3-RI-10 → C-PH3-RI-30 |
| C-PH3-RI-10 | ICON - Mechanical Reinstallation | 2025-12-29 → 2026-01-12 (+14d) | 2025-12-30 → 2026-01-13 (+14d) |  |  | -29d → -26d | P-PRO-CH-10 FS+1d, C-PH2-RB-30, IPP-SAFE-30, C-PH3-RI-30 → P-PRO-CH-10 FS+1d, C-PH2-RB-30, IPP-SAFE-30, C-PH3-RI-20 |
| C-PH3-RB-20 | Insulation (ARMICELL) for Chiller | 2025-12-31 → 2026-01-16 (+16d) | 2026-01-06 → 2026-01-20 (+14d) |  |  | -26d → -28d | C-PH3-RI-10 → C-PH3-RI-10, CX-100 |
| 2 | **Commissioning and Startup** | 2026-01-12 → 2026-01-13 (+1d) | 2026-01-14 → 2026-01-15 (+1d) |  |  |  |  |
| CX-100 | Start up and Commissioning | 2026-01-12 → 2026-01-13 (+1d) | 2026-01-14 → 2026-01-15 (+1d) |  |  | -29d → -30d | IPP-QAQC-20, C-PH3-RB-20 → IPP-QAQC-20 |
| 15 | **Handover and Substantial Performance** | 2026-01-09 → 2026-01-16 (+7d) | 2026-02-20 → 2026-02-23 (+3d) |  |  |  |  |
| PCO-120 | O&M Manual Submission, Review and Approval | 2026-01-15 → 2026-01-16 (+1d) | 2026-01-28 → 2026-01-29 (+1d) |  |  | -29d → -30d |  |
| PCO-140 | Site Demonstration and Training for RAH FM&E | 2026-01-15 → 2026-01-16 (+1d) | 2026-01-15 → 2026-01-16 (+1d) |  |  | -26d → -25d |  |
| PCO-110 | Final Clean | 2026-01-09 → 2026-01-21 (+12d) | 2026-01-09 → 2026-01-21 (+12d) |  |  | -22d → -28d | C-PH3-RI-20 → C-PH3-RI-20, C-PH3-RB-20 |
| PCO-130 | Substantial Performance of Work | 2026-01-15 → 2026-01-21 (+6d) | 2026-01-15 → 2026-01-21 (+6d) |  |  | -26d → -28d |  |
| PCO-160 | O&M Binders Printing | 2026-01-29 → 2026-01-30 (+1d) | 2026-02-12 → 2026-02-13 (+1d) |  |  | -29d → -30d |  |
| PCO-170 | O&M Binders Delivery | 2026-02-13 → 2026-02-17 (+4d) | 2026-02-20 → 2026-02-23 (+3d) |  |  | -29d → -30d |  |
| 16 | **Close Out and Final Completion** | 2026-01-16 → 2026-01-22 (+6d) | 2026-02-20 → 2026-02-23 (+3d) |  |  |  |  |
| PCS-140 | Final Defficiencies Closeout | 2026-01-16 → 2026-01-22 (+6d) | 2026-02-12 → 2026-02-19 (+7d) |  |  | -24d → -28d |  |
| PCS-150 | Total Completion | 2026-02-20 → 2026-02-23 (+3d) | 2026-02-20 → 2026-02-23 (+3d) |  |  | -29d → -30d |  |

## Version 5 (data date 2026-01-23, saved 2026-02-08, file UP-54069-20260122.xer)

Note of the change: Initial commit: schedule analytics tool

Last finish 2026-02-23 → 2026-05-13 (+79d). Complete tasks 31 → 38.

Added:

| ID | Task | Duration | Start | Finish | Predecessors | Constraint |
| --- | --- | --- | --- | --- | --- | --- |
| 6 | **Changes and Delays Management** |  | 2025-04-07 | 2026-04-01 |  |  |
| 3 | **CO#04 Actuator Replacement and Power** |  | 2026-01-09 | 2026-02-10 |  |  |
| X-CO-02-30 | CO#04 Issued | 5d | 2026-01-09 A | 2026-01-09 A |  |  |
| X-CO-02-40 | CO#04 Procurment and Delivery | 30d | 2026-01-10 A | 2026-02-10 | X-CO-02-30 |  |
| 4 | **Weather Constraints - Commissioning startup** |  | 2025-12-19 | 2026-04-01 |  |  |
| WX-COM-100 | Winter 2026 | 65d | 2025-12-19 A | 2026-04-01 |  |  |
| C-PH3-RB-20 | Pipe Insulation (Crew Availability) | 5d | 2026-01-26 | 2026-01-30 | C-PH3-RI-10 | start on or after 2026-01-26 |
| C-PH3-RB-40 | Procurement of Chiller Tank | 10d | 2026-01-26 | 2026-02-06 | C-PH3-RI-30 | start on or after 2026-01-26 |
| C-PH3-RI-40 | Mechanical Installation of Actuators | 2d | 2026-02-11 | 2026-02-12 | X-CO-02-40 |  |
| C-PH3-RI-50 | Electrical Installation of Actuators | 2d | 2026-02-13 | 2026-02-17 | C-PH3-RI-40 |  |
| CX-110 | Pre Commissioning | 5d | 2026-01-05 A | 2026-01-16 A | IPP-QAQC-20 |  |
| CX-120 | Commissioning of Actuators | 1d | 2026-02-18 | 2026-02-18 | C-PH3-RI-50 |  |

Removed: Change Management

Changed:

| ID | Task | Start | Finish | Duration | Complete | Total float | Predecessors |
| --- | --- | --- | --- | --- | --- | --- | --- |
| 3 | **Project Summary & Milestones** |  | 2026-02-23 → 2026-05-13 (+79d) |  |  |  |  |
| MILE-130 | Substiantial Performance of Work | 2026-01-21 → 2026-04-08 (+77d) | 2026-01-21 → 2026-04-08 (+77d) |  |  | -28d → -81d |  |
| MILE-140 | Total Completion | 2026-02-23 → 2026-05-13 (+79d) | 2026-02-23 → 2026-05-13 (+79d) |  |  | -30d → -86d |  |
| 5 | **Integrated Phased Planning** |  | 2026-01-16 → 2026-04-08 (+82d) |  |  |  |  |
| 4 | **QA/QC Hold Points** | 2026-01-12 → 2026-01-09 (-3d) | 2026-01-16 → 2026-04-08 (+82d) |  |  |  |  |
| IPP-QAQC-20 | Electrical Inspection | 2026-01-12 → 2026-01-09 A (-3d) | 2026-01-12 → 2026-01-09 A (-3d) |  | 0% → 100% | -30d → none |  |
| IPP-QAQC-10 | Mechanical Inspection | 2026-01-14 → 2026-01-16 A (+2d) | 2026-01-14 → 2026-01-16 A (+2d) |  | 0% → 100% | -23d → none |  |
| IPP-QAQC-30 | FM&E Inspection | 2026-01-16 → 2026-04-08 (+82d) | 2026-01-16 → 2026-04-08 (+82d) |  |  | -25d → -81d |  |
| 8 | **Construction/Repair** |  | 2026-01-20 → 2026-02-17 (+28d) |  |  |  |  |
| 9 | **Construction** |  | 2026-01-20 → 2026-02-17 (+28d) |  |  |  |  |
| 3 | **Re-Install Phase #3** |  | 2026-01-20 → 2026-02-17 (+28d) |  |  |  |  |
| C-PH3-RI-20 | Final Electrical | 2026-01-05 → 2025-12-19 A (-17d) | 2026-01-09 A |  | 0% → 100% | -30d → none | C-PH3-RI-30 → C-PH3-RI-30 FF |
| C-PH3-RI-10 | ICON - Mechanical Reinstallation | 2026-01-12 → 2026-01-05 A (-7d) | 2026-01-13 → 2026-01-16 A (+3d) |  | 0% → 100% | -26d → none |  |
| C-PH3-RI-30 | ICON - Mechanical Hoisting | 2025-12-19 → 2026-01-14 A (+26d) | 2025-12-23 → 2026-01-16 A (+24d) |  | 0% → 100% | -30d → none |  |
| C-PH3-RB-30 | Insulation (ARMICELL) for Chiller | 2026-01-16 → 2026-02-09 (+24d) | 2026-01-20 → 2026-02-13 (+24d) | 3d → 5d |  | -28d → -46d | C-PH3-RI-10, CX-100 → C-PH3-RB-40 |
| 2 | **Commissioning and Startup** | 2026-01-13 → 2026-01-05 (-8d) | 2026-01-15 → 2026-04-07 (+82d) |  |  |  |  |
| CX-100 | Start up and Commissioning | 2026-01-13 → 2026-04-02 (+79d) | 2026-01-15 → 2026-04-07 (+82d) |  |  | -30d → -86d | IPP-QAQC-20 → IPP-QAQC-20, CX-110, WX-COM-100 |
| 15 | **Handover and Substantial Performance** | 2026-01-16 → 2026-02-17 (+32d) | 2026-02-23 → 2026-05-13 (+79d) |  |  |  |  |
| PCO-110 | Final Clean | 2026-01-21 → 2026-02-17 (+27d) | 2026-01-21 → 2026-02-17 (+27d) |  |  | -28d → -46d | C-PH3-RI-20, C-PH3-RB-30 → C-PH3-RI-20, C-PH3-RB-20, C-PH3-RB-30 |
| PCO-120 | O&M Manual Submission, Review and Approval | 2026-01-16 → 2026-04-08 (+82d) | 2026-01-29 → 2026-04-21 (+82d) |  |  | -30d → -86d |  |
| PCO-140 | Site Demonstration and Training for RAH FM&E | 2026-01-16 → 2026-04-08 (+82d) | 2026-01-16 → 2026-04-08 (+82d) |  |  | -25d → -81d |  |
| PCO-130 | Substantial Performance of Work | 2026-01-21 → 2026-04-08 (+77d) | 2026-01-21 → 2026-04-08 (+77d) |  |  | -28d → -81d | CX-100 FF, IPP-QAQC-30 FF, IPP-QAQC-10 FF, PCO-140 FF, PCO-110 FF → CX-100 FF, IPP-QAQC-30 FF, IPP-QAQC-10 FF, PCO-140 FF, PCO-110 FF, CX-120 FF |
| PCO-160 | O&M Binders Printing | 2026-01-30 → 2026-04-22 (+82d) | 2026-02-13 → 2026-05-06 (+82d) |  |  | -30d → -86d |  |
| PCO-170 | O&M Binders Delivery | 2026-02-17 → 2026-05-07 (+79d) | 2026-02-23 → 2026-05-13 (+79d) |  |  | -30d → -86d |  |
| 16 | **Close Out and Final Completion** | 2026-01-22 → 2026-04-09 (+77d) | 2026-02-23 → 2026-05-13 (+79d) |  |  |  |  |
| PCS-140 | Final Defficiencies Closeout | 2026-01-22 → 2026-04-09 (+77d) | 2026-02-19 → 2026-05-06 (+76d) |  |  | -28d → -81d |  |
| PCS-150 | Total Completion | 2026-02-23 → 2026-05-13 (+79d) | 2026-02-23 → 2026-05-13 (+79d) |  |  | -30d → -86d |  |
